How a schedule from MS Project changed from version to version. A marks actual dates.

## Version 1 (saved 2019-11-18, file Proyecto1.1.mpp)

Note of the change: 3rd year

| ID | WBS | Task | Duration | Start | Finish | Predecessors | Total float | Constraint |
| --- | --- | --- | --- | --- | --- | --- | --- | --- |
| 1 | 1 | **Proyecto GESPROAGRO** | 38.75d | 2019-11-11 | 2020-01-21 |  | 0d |  |
| 2 | 1.1 | **Requerimientos de los usuarios** | 6d | 2019-11-11 | 2019-11-18 |  | 2d |  |
| 3 |  | Toma de requisitos de usuario | 5d | 2019-11-11 | 2019-11-15 |  | 2d |  |
| 4 |  | Validación de los requisitos de usuario | 1d | 2019-11-18 | 2019-11-18 | 3 | 2d |  |
| 5 | 1.2 | **Análisis de requisitos de software** | 14d | 2019-11-11 | 2019-11-28 |  | 1d |  |
| 6 |  | Estudio de los requisitos Software | 6d | 2019-11-11 | 2019-11-18 |  | 1d |  |
| 7 |  | Validación de los requisitos Software | 1d | 2019-11-19 | 2019-11-19 | 6 | 2d |  |
| 8 |  | Instalación del Software necesario en los PCs | 4d | 2019-11-20 | 2019-11-25 | 7 | 2d |  |
| 9 |  | Preparación de los puestos de trabajo | 2d | 2019-11-26 | 2019-11-27 | 8 | 2d |  |
| 10 |  | Preparación del servidor de desarrollo | 4d | 2019-11-19 | 2019-11-28 | 6 | 1d |  |
| 11 |  | Preparación del servidor de preexplotación | 1d | 2019-11-22 | 2019-11-22 | 6 | 5d |  |
| 12 | 1.3 | **Análisis de requisitos del Sistema** | 9d | 2019-11-19 | 2019-11-29 |  | 0d |  |
| 13 |  | Estimación de hardware necesario | 24h | 2019-11-19 | 2019-11-21 | 4 | 2d |  |
| 14 | 1.3.2 | **Validación de HW necesario** | 6d | 2019-11-22 | 2019-11-29 |  | 0d |  |
| 15 |  | Validación de hardware necesario (Técnico) | 8h | 2019-11-29 | 2019-11-29 | 13 | 0d | finish no earlier than 2019-11-26 |
| 16 |  | Validación de hardware necesario (JP) | 8h | 2019-11-22 | 2019-11-22 | 13 | 5d |  |
| 17 | 1.4 | **Diseño Preliminar** | 22.42d | 2019-12-02 | 2020-01-20 |  | 0d |  |
| 18 |  | Diseño de los datos y procesos | 3d | 2019-12-02 | 2019-12-04 | 2, 5, 12 | 0d |  |
| 19 |  | Diseño del plan de pruebas | 2d | 2019-12-16 | 2020-01-20 | 18 | 1.33d |  |
| 20 | 1.5 | **Diseño Detallado** | 20.75d | 2019-12-05 | 2020-01-21 |  | 0d |  |
| 21 |  | Diseño gráfico de la aplicación | 5d | 2019-12-05 | 2019-12-13 | 18 | 15.75d |  |
| 22 | 1.5.2 | **Diseño Técnico de componentes** | 20.75d | 2019-12-05 | 2020-01-21 |  | 0d |  |
| 23 |  | Presentación | 1d | 2019-12-05 | 2019-12-05 | 18 | 19.75d |  |
| 24 |  | Mantenimiento de Explotación Agrícola | 2d | 2019-12-12 | 2019-12-20 | 18 | 11.58d |  |
| 25 |  | Mantenimiento de Historial; Reservas, Tarifas y Eventos | 4d | 2020-01-13 | 2020-01-17 | 18 | 2.33d |  |
| 26 |  | Localización | 5d | 2019-12-12 | 2020-01-21 | 18 | 0d |  |
| 27 | 1.6 | **Diseño de la Base de Datos** | 8d | 2019-12-05 | 2019-12-18 |  | 11.33d |  |
| 28 |  | Diseño de Tablas y Relaciones | 3d | 2019-12-05 | 2019-12-11 | 18 | 11.33d |  |
| 29 | 1.6.2 | **Validación del diseño de la BD** | 5d | 2019-12-12 | 2019-12-18 |  | 11.33d |  |
| 30 |  | Validación del diseño de la BD (Diseñador) | 2d | 2019-12-17 | 2019-12-18 | 28 | 12.75d | finish no earlier than 2019-12-18 |
| 31 |  | Validación del diseño de la BD(JP) | 1d | 2019-12-12 | 2019-12-12 | 28 | 11.33d |  |
| 32 | 1.7 | **Construcción** | 13d | 2019-12-03 | 2020-01-07 |  | 0.33d |  |
| 33 |  | Construcción del Prototipo | 3d | 2019-12-11 | 2019-12-13 | 18SS+5d | 15.75d |  |
| 34 | 1.7.2 | **Construcción de la BD** | 7d | 2019-12-13 | 2020-01-07 |  | 9.75d |  |
| 35 |  | Construcción de la BD (Diseñador) | 3d | 2019-12-19 | 2020-01-07 | 31 | 9.75d | finish no earlier than 2020-01-07 |
| 36 |  | Construcción de la BD (Programador) | 2d | 2019-12-13 | 2019-12-20 | 31 | 11.33d |  |
| 37 |  | Codificación | 7.75d | 2019-12-03 | 2019-12-16 | 18FS-2d | 0.33d |  |
| 38 | 1.8 | **Pruebas** | 8.67d | 2019-12-16 | 2020-01-13 |  | 0.33d |  |
| 39 |  | Pruebas Unitarias | 1d | 2019-12-16 | 2019-12-17 | 37 | 0.33d |  |
| 40 |  | Pruebas de Integración | 0.67d | 2019-12-17 | 2019-12-18 | 39 | 0.33d |  |
| 41 |  | Pruebas de Sistema | 7d | 2019-12-18 | 2020-01-13 | 40 | 0.33d |  |
| 42 | 1.9 | **Demostración a los usuarios** | 6d | 2020-01-13 | 2020-01-21 |  | 0.33d |  |
| 43 |  | Entrenamiento de usuarios | 32h | 2020-01-13 | 2020-01-17 | 12, 38 | 0.33d |  |
| 44 |  | Validación del producto por los usuarios | 2d | 2020-01-17 | 2020-01-21 | 43 | 0.33d |  |
| 45 | 1.10 | **Documentación** | 19.67d | 2019-11-28 | 2020-01-14 |  | 5.33d |  |
| 46 |  | Documentación técnica de proyecto | 10d | 2019-11-28 | 2019-12-16 | 37FF | 15d |  |
| 47 |  | Documentación de usuarios | 5d | 2020-01-07 | 2020-01-14 | 40FS+3d | 5.33d |  |

## Version 2 (saved 2019-11-18, file Proyecto1.2(linea base).mpp)

Note of the change: 3rd year

Last finish stays 2020-01-21. Complete tasks 0 → 9.

Changed:

| ID | Task | Start | Finish | Duration | Complete | Total float | Other |
| --- | --- | --- | --- | --- | --- | --- | --- |
| 1 | **Proyecto GESPROAGRO** | 2019-11-11 A |  |  | 0% → 26% |  | baseline start none → 2019-11-11; baseline finish none → 2020-01-21 |
| 2 | **Requerimientos de los usuarios** | 2019-11-11 A | 2019-11-18 A |  | 0% → 100% | 2d → none | baseline start none → 2019-11-11; baseline finish none → 2019-11-18 |
| 3 | Toma de requisitos de usuario | 2019-11-11 A | 2019-11-15 A |  | 0% → 100% | 2d → none | baseline start none → 2019-11-11; baseline finish none → 2019-11-15 |
| 4 | Validación de los requisitos de usuario | 2019-11-18 A | 2019-11-18 A |  | 0% → 100% | 2d → none | baseline start none → 2019-11-18; baseline finish none → 2019-11-18 |
| 5 | **Análisis de requisitos de software** | 2019-11-11 A | 2019-11-28 → 2019-11-29 (+1d) | 14d → 15d | 0% → 80% | 1d → 0d | baseline start none → 2019-11-11; baseline finish none → 2019-11-28 |
| 6 | Estudio de los requisitos Software | 2019-11-11 A | 2019-11-18 A |  | 0% → 100% | 1d → none | baseline start none → 2019-11-11; baseline finish none → 2019-11-18 |
| 7 | Validación de los requisitos Software | 2019-11-19 A | 2019-11-19 A |  | 0% → 100% | 2d → none | baseline start none → 2019-11-19; baseline finish none → 2019-11-19 |
| 8 | Instalación del Software necesario en los PCs | 2019-11-20 A | 2019-11-25 → 2019-11-27 (+2d) | 4d → 6d | 0% → 67% | 2d → 0d | baseline start none → 2019-11-20; baseline finish none → 2019-11-25 |
| 9 | Preparación de los puestos de trabajo | 2019-11-26 → 2019-11-28 (+2d) | 2019-11-27 → 2019-11-29 (+2d) |  |  | 2d → 0d | baseline start none → 2019-11-26; baseline finish none → 2019-11-27 |
| 10 | Preparación del servidor de desarrollo | 2019-11-19 A | 2019-11-28 A |  | 0% → 100% | 1d → none | baseline start none → 2019-11-19; baseline finish none → 2019-11-28 |
| 11 | Preparación del servidor de preexplotación | 2019-11-22 A | 2019-11-22 A |  | 0% → 100% | 5d → none | baseline start none → 2019-11-22; baseline finish none → 2019-11-22 |
| 12 | **Análisis de requisitos del Sistema** | 2019-11-19 A | 2019-11-29 A |  | 0% → 100% | 0d → none | baseline start none → 2019-11-19; baseline finish none → 2019-11-29 |
| 13 | Estimación de hardware necesario | 2019-11-19 A | 2019-11-21 A |  | 0% → 100% | 2d → none | baseline start none → 2019-11-19; baseline finish none → 2019-11-21 |
| 14 | **Validación de HW necesario** | 2019-11-22 A | 2019-11-29 A |  | 0% → 100% | 0d → none | baseline start none → 2019-11-22; baseline finish none → 2019-11-29 |
| 15 | Validación de hardware necesario (Técnico) | 2019-11-29 A | 2019-11-29 A |  | 0% → 100% | 0d → none | baseline start none → 2019-11-29; baseline finish none → 2019-11-29 |
| 16 | Validación de hardware necesario (JP) | 2019-11-22 A | 2019-11-22 A |  | 0% → 100% | 5d → none | baseline start none → 2019-11-22; baseline finish none → 2019-11-22 |
| 17 | **Diseño Preliminar** |  |  |  |  |  | baseline start none → 2019-12-02; baseline finish none → 2020-01-20 |
| 18 | Diseño de los datos y procesos |  |  |  |  |  | baseline start none → 2019-12-02; baseline finish none → 2019-12-04 |
| 19 | Diseño del plan de pruebas |  |  |  |  |  | baseline start none → 2019-12-16; baseline finish none → 2020-01-20 |
| 20 | **Diseño Detallado** |  |  |  |  |  | baseline start none → 2019-12-05; baseline finish none → 2020-01-21 |
| 21 | Diseño gráfico de la aplicación |  |  |  |  |  | baseline start none → 2019-12-05; baseline finish none → 2019-12-13 |
| 22 | **Diseño Técnico de componentes** |  |  |  |  |  | baseline start none → 2019-12-05; baseline finish none → 2020-01-21 |
| 23 | Presentación |  |  |  |  |  | baseline start none → 2019-12-05; baseline finish none → 2019-12-05 |
| 24 | Mantenimiento de Explotación Agrícola |  |  |  |  |  | baseline start none → 2019-12-12; baseline finish none → 2019-12-20 |
| 25 | Mantenimiento de Historial; Reservas, Tarifas y Eventos |  |  |  |  |  | baseline start none → 2020-01-13; baseline finish none → 2020-01-17 |
| 26 | Localización |  |  |  |  |  | baseline start none → 2019-12-12; baseline finish none → 2020-01-21 |
| 27 | **Diseño de la Base de Datos** |  |  |  |  |  | baseline start none → 2019-12-05; baseline finish none → 2019-12-18 |
| 28 | Diseño de Tablas y Relaciones |  |  |  |  |  | baseline start none → 2019-12-05; baseline finish none → 2019-12-11 |
| 29 | **Validación del diseño de la BD** |  |  |  |  |  | baseline start none → 2019-12-12; baseline finish none → 2019-12-18 |
| 30 | Validación del diseño de la BD (Diseñador) |  |  |  |  |  | baseline start none → 2019-12-17; baseline finish none → 2019-12-18 |
| 31 | Validación del diseño de la BD(JP) |  |  |  |  |  | baseline start none → 2019-12-12; baseline finish none → 2019-12-12 |
| 32 | **Construcción** |  |  |  |  |  | baseline start none → 2019-12-03; baseline finish none → 2020-01-07 |
| 33 | Construcción del Prototipo |  |  |  |  |  | baseline start none → 2019-12-11; baseline finish none → 2019-12-13 |
| 34 | **Construcción de la BD** |  |  |  |  |  | baseline start none → 2019-12-13; baseline finish none → 2020-01-07 |
| 35 | Construcción de la BD (Diseñador) |  |  |  |  |  | baseline start none → 2019-12-19; baseline finish none → 2020-01-07 |
| 36 | Construcción de la BD (Programador) |  |  |  |  |  | baseline start none → 2019-12-13; baseline finish none → 2019-12-20 |
| 37 | Codificación |  |  |  |  |  | baseline start none → 2019-12-03; baseline finish none → 2019-12-16 |
| 38 | **Pruebas** |  |  |  |  |  | baseline start none → 2019-12-16; baseline finish none → 2020-01-13 |
| 39 | Pruebas Unitarias |  |  |  |  |  | baseline start none → 2019-12-16; baseline finish none → 2019-12-17 |
| 40 | Pruebas de Integración |  |  |  |  |  | baseline start none → 2019-12-17; baseline finish none → 2019-12-18 |
| 41 | Pruebas de Sistema |  |  |  |  |  | baseline start none → 2019-12-18; baseline finish none → 2020-01-13 |
| 42 | **Demostración a los usuarios** |  |  |  |  |  | baseline start none → 2020-01-13; baseline finish none → 2020-01-21 |
| 43 | Entrenamiento de usuarios |  |  |  |  |  | baseline start none → 2020-01-13; baseline finish none → 2020-01-17 |
| 44 | Validación del producto por los usuarios |  |  |  |  |  | baseline start none → 2020-01-17; baseline finish none → 2020-01-21 |
| 45 | **Documentación** |  |  |  |  |  | baseline start none → 2019-11-28; baseline finish none → 2020-01-14 |
| 46 | Documentación técnica de proyecto |  |  |  |  |  | baseline start none → 2019-11-28; baseline finish none → 2019-12-16 |
| 47 | Documentación de usuarios |  |  |  |  |  | baseline start none → 2020-01-07; baseline finish none → 2020-01-14 |
