# Proyecto1.0

How a schedule from MS Project changed from version to version. A marks actual dates.

## Version 1 (saved 2019-11-26, file Proyecto1.0.mpp)

Note of the change: 3rd year

| ID | WBS | Task | Duration | Start | Finish | Predecessors | Total float | Constraint |
| --- | --- | --- | --- | --- | --- | --- | --- | --- |
| 1 | 1 | **Proyecto GESPROAGRO** | 38.54d | 2019-11-11 | 2020-01-21 |  | 0d |  |
| 2 | 1.1 | **Requerimientos de los usuarios** | 6d | 2019-11-11 | 2019-11-18 |  | 3d |  |
| 3 |  | Toma de requisitos de usuario | 5d | 2019-11-11 | 2019-11-15 |  | 3d |  |
| 4 |  | Validación de los requisitos de usuario | 1d | 2019-11-18 | 2019-11-18 | 3 | 3d |  |
| 5 | 1.2 | **Análisis de requisitos de software** | 12.5d | 2019-11-11 | 2019-11-27 |  | 0d |  |
| 6 |  | Estudio de los requisitos Software | 3d | 2019-11-11 | 2019-11-13 |  | 0d |  |
| 7 |  | Validación de los requisitos Software | 1d | 2019-11-14 | 2019-11-14 | 6 | 0d |  |
| 8 |  | Instalación del Software necesario en los PCs | 4d | 2019-11-15 | 2019-11-20 | 7 | 0d |  |
| 9 |  | Preparación de los puestos de trabajo | 2d | 2019-11-25 | 2019-11-27 | 8 | 0d |  |
| 10 |  | Preparación del servidor de desarrollo | 3d | 2019-11-14 | 2019-11-22 | 6 | 3d |  |
| 11 |  | Preparación del servidor de preexplotación | 1d | 2019-11-22 | 2019-11-25 | 6 | 2d |  |
| 12 | 1.3 | **Análisis de requisitos del Sistema** | 6d | 2019-11-19 | 2019-11-26 |  | 0.5d |  |
| 13 |  | Estimación de hardware necesario | 16h | 2019-11-19 | 2019-11-21 | 4 | 3d |  |
| 14 | 1.3.2 | **Validación de HW necesario** | 3.5d | 2019-11-21 | 2019-11-26 |  | 0.5d |  |
| 15 |  | Validación de hardware necesario (Técnico) | 5.33h | 2019-11-26 | 2019-11-26 | 13 | 0.5d | finish no earlier than 2019-11-26 |
| 16 |  | Validación de hardware necesario (JP) | 8h | 2019-11-21 | 2019-11-22 | 13 | 3d |  |
| 17 | 1.4 | **Diseño Preliminar** | 21.17d | 2019-11-27 | 2020-01-14 |  | 0d |  |
| 18 |  | Diseño de los datos y procesos | 6d | 2019-11-27 | 2019-12-05 | 2, 5, 12 | 0d |  |
| 19 |  | Diseño del plan de pruebas | 2d | 2019-12-19 | 2020-01-14 | 18 | 4.87d |  |
| 20 | 1.5 | **Diseño Detallado** | 14.74d | 2019-12-16 | 2020-01-21 |  | 0.54d |  |
| 21 |  | Diseño gráfico de la aplicación | 5d | 2019-12-16 | 2020-01-07 | 18 | 10.27d |  |
| 22 | 1.5.2 | **Diseño Técnico de componentes** | 14.33d | 2019-12-16 | 2020-01-21 |  | 0.54d |  |
| 23 |  | Presentación | 1d | 2019-12-20 | 2020-01-07 | 18 | 10.3d |  |
| 24 |  | Mantenimiento de Explotación Agrícola | 2d | 2019-12-16 | 2020-01-15 | 18 | 3.87d |  |
| 25 |  | Mantenimiento de Historial; Reservas, Tarifas y Eventos | 4d | 2020-01-07 | 2020-01-20 | 18 | 1.53d |  |
| 26 |  | Localización | 5d | 2019-12-16 | 2020-01-21 | 18 | 0.54d |  |
| 27 | 1.6 | **Diseño de la Base de Datos** | 38.54d | 2019-11-11 | 2020-01-21 |  | 0d |  |
| 28 |  | Diseño de Tablas y Relaciones | 3d | 2019-12-17 | 2020-01-21 | 18 | 0d |  |
| 29 | 1.6.2 | **Validación del diseño de la BD** | 28.67d | 2019-11-11 | 2020-01-07 |  | 9.87d |  |
| 30 |  | Validación del diseño de la BD (Diseñador) | 2d | 2019-12-18 | 2020-01-07 |  | 9.87d | finish no earlier than 2019-12-18 |
| 31 |  | Validación del diseño de la BD(JP) | 1d | 2019-11-11 | 2019-11-11 |  | 27d |  |
| 32 | 1.7 | **Construcción** | 29.04d | 2019-11-18 | 2020-01-15 |  | 4.5d |  |
| 33 |  | Construcción del Prototipo | 1.5d | 2019-12-13 | 2019-12-16 | 18SS+5d | 14.87d |  |
| 34 | 1.7.2 | **Construcción de la BD** | 29.04d | 2019-11-18 | 2020-01-15 |  | 4.5d |  |
| 35 |  | Construcción de la BD (Diseñador) | 3d | 2020-01-10 | 2020-01-15 | 31 | 4.5d | finish no earlier than 2020-01-07 |
| 36 |  | Construcción de la BD (Programador) | 2d | 2019-11-18 | 2019-11-21 | 31 | 29.54d |  |
| 37 |  | Codificación | 9.21d | 2019-12-03 | 2019-12-18 | 18FS-2d | 1.83d |  |
| 38 | 1.8 | **Pruebas** | 5.33d | 2019-12-18 | 2020-01-10 |  | 1.83d |  |
| 39 |  | Pruebas Unitarias | 1d | 2019-12-18 | 2019-12-19 | 37 | 1.83d |  |
| 40 |  | Pruebas de Integración | 2d | 2019-12-19 | 2020-01-07 | 39 | 1.83d |  |
| 41 |  | Pruebas de Sistema | 2.33d | 2020-01-07 | 2020-01-10 | 40 | 2.5d |  |
| 42 | 1.9 | **Demostración a los usuarios** | 5d | 2020-01-10 | 2020-01-17 |  | 2.5d |  |
| 43 |  | Entrenamiento de usuarios | 32h | 2020-01-10 | 2020-01-16 | 12, 38 | 2.5d |  |
| 44 |  | Validación del producto por los usuarios | 1d | 2020-01-16 | 2020-01-17 | 43 | 2.5d |  |
| 45 | 1.10 | **Documentación** | 21d | 2019-12-02 | 2020-01-17 |  | 1.83d |  |
| 46 |  | Documentación técnica de proyecto | 10d | 2019-12-02 | 2019-12-18 | 37FF | 12.83d |  |
| 47 |  | Documentación de usuarios | 5d | 2020-01-10 | 2020-01-17 | 40FS+3d | 1.83d |  |

## Version 2 (saved 2019-11-27, file Proyecto1.1_-_Linea_Base.mpp)

Note of the change: 3rd year

Last finish 2020-01-21 → 2020-01-20 (-1d). Complete tasks 0 → 7.

Changed:

| ID | Task | Start | Finish | Duration | Complete | Total float | Other |
| --- | --- | --- | --- | --- | --- | --- | --- |
| 1 | **Proyecto GESPROAGRO** | 2019-11-11 A | 2020-01-21 → 2020-01-20 (-1d) | 38.54d → 37.59d | 0% → 24% |  | baseline start none → 2019-11-11; baseline finish none → 2020-01-20 |
| 2 | **Requerimientos de los usuarios** | 2019-11-11 A | 2019-11-18 A |  | 0% → 100% | 3d → none | baseline start none → 2019-11-11; baseline finish none → 2019-11-18 |
| 3 | Toma de requisitos de usuario | 2019-11-11 A | 2019-11-15 A |  | 0% → 100% | 3d → none | baseline start none → 2019-11-11; baseline finish none → 2019-11-15 |
| 4 | Validación de los requisitos de usuario | 2019-11-18 A | 2019-11-18 A |  | 0% → 100% | 3d → none | baseline start none → 2019-11-18; baseline finish none → 2019-11-18 |
| 5 | **Análisis de requisitos de software** | 2019-11-11 A | 2019-11-27 → 2019-12-02 (+5d) | 12.5d → 15.51d | 0% → 82% | 0d → 0.01d | baseline start none → 2019-11-11; baseline finish none → 2019-11-27 |
| 6 | Estudio de los requisitos Software | 2019-11-11 A | 2019-11-13 A |  | 0% → 100% | 0d → none | baseline start none → 2019-11-11; baseline finish none → 2019-11-13 |
| 7 | Validación de los requisitos Software | 2019-11-14 A | 2019-11-14 A |  | 0% → 100% | 0d → none | baseline start none → 2019-11-14; baseline finish none → 2019-11-14 |
| 8 | Instalación del Software necesario en los PCs | 2019-11-15 A | 2019-11-20 → 2019-11-28 (+8d) | 4d → 10d | 0% → 80% | 0d → 0.01d | baseline start none → 2019-11-15; baseline finish none → 2019-11-20 |
| 9 | Preparación de los puestos de trabajo | 2019-11-25 → 2019-11-29 (+4d) | 2019-11-27 → 2019-12-02 (+5d) | 2d → 1.51d |  | 0d → 0.01d | baseline start none → 2019-11-25; baseline finish none → 2019-11-27 |
| 10 | Preparación del servidor de desarrollo | 2019-11-14 A | 2019-11-22 A |  | 0% → 100% | 3d → none | baseline start none → 2019-11-14; baseline finish none → 2019-11-22 |
| 11 | Preparación del servidor de preexplotación | 2019-11-22 A | 2019-11-25 A |  | 0% → 100% | 2d → none | baseline start none → 2019-11-22; baseline finish none → 2019-11-25 |
| 12 | **Análisis de requisitos del Sistema** | 2019-11-19 A | 2019-11-26 → 2019-11-29 (+3d) | 6d → 8.67d | 0% → 55% | 0.5d → 0.86d | baseline start none → 2019-11-19; baseline finish none → 2019-11-26 |
| 13 | Estimación de hardware necesario | 2019-11-19 A | 2019-11-21 A |  | 0% → 100% | 3d → none | baseline start none → 2019-11-19; baseline finish none → 2019-11-21 |
| 14 | **Validación de HW necesario** |  | 2019-11-26 → 2019-11-29 (+3d) | 3.5d → 6.17d |  | 0.5d → 0.86d | baseline start none → 2019-11-21; baseline finish none → 2019-11-26 |
| 15 | Validación de hardware necesario (Técnico) | 2019-11-26 → 2019-11-29 (+3d) | 2019-11-26 → 2019-11-29 (+3d) |  |  | 0.5d → 0.86d | baseline start none → 2019-11-26; baseline finish none → 2019-11-26 |
| 16 | Validación de hardware necesario (JP) |  |  |  |  | 3d → 6.02d | baseline start none → 2019-11-21; baseline finish none → 2019-11-22 |
| 17 | **Diseño Preliminar** | 2019-11-27 → 2019-12-02 (+5d) | 2020-01-14 → 2020-01-08 (-6d) | 21.17d → 14.28d |  | 0d → 0.01d | baseline start none → 2019-11-27; baseline finish none → 2020-01-10 |
| 18 | Diseño de los datos y procesos | 2019-11-27 → 2019-12-02 (+5d) | 2019-12-05 → 2019-12-11 (+6d) | 6d → 4.58d |  | 0d → 0.01d | baseline start none → 2019-11-27; baseline finish none → 2019-12-04 |
| 19 | Diseño del plan de pruebas | 2019-12-19 → 2020-01-07 (+19d) | 2020-01-14 → 2020-01-08 (-6d) | 2d → 1.74d |  | 4.87d → 7.8d | baseline start none → 2019-12-18; baseline finish none → 2020-01-10 |
| 20 | **Diseño Detallado** |  | 2020-01-21 → 2020-01-16 (-5d) | 14.74d → 11.6d |  | 0.54d → 2.24d | baseline start none → 2019-12-12; baseline finish none → 2020-01-16 |
| 21 | Diseño gráfico de la aplicación | 2019-12-16 → 2019-12-17 (+1d) | 2020-01-07 → 2020-01-08 (+1d) |  |  | 10.27d → 7.74d | baseline start none → 2019-12-13; baseline finish none → 2019-12-20 |
| 22 | **Diseño Técnico de componentes** |  | 2020-01-21 → 2020-01-16 (-5d) | 14.33d → 11.6d |  | 0.54d → 2.24d | baseline start none → 2019-12-12; baseline finish none → 2020-01-16 |
| 23 | Presentación | 2019-12-20 → 2020-01-08 (+19d) | 2020-01-07 → 2020-01-09 (+2d) |  |  | 10.3d → 6.8d | baseline start none → 2019-12-19; baseline finish none → 2019-12-20 |
| 24 | Mantenimiento de Explotación Agrícola | 2019-12-16 → 2019-12-18 (+2d) | 2020-01-15 → 2020-01-13 (-2d) |  |  | 3.87d → 5.2d | baseline start none → 2019-12-12; baseline finish none → 2020-01-13 |
| 25 | Mantenimiento de Historial; Reservas, Tarifas y Eventos | 2020-01-07 → 2019-12-16 (-22d) | 2020-01-20 → 2020-01-13 (-7d) |  |  | 1.53d → 4.74d | baseline start none → 2019-12-19; baseline finish none → 2020-01-15 |
| 26 | Localización |  | 2020-01-21 → 2020-01-16 (-5d) |  |  | 0.54d → 2.24d | resources ProgramadorJ → ProgramadorJ; AnalistaP; baseline start none → 2019-12-12; baseline finish none → 2020-01-16 |
| 27 | **Diseño de la Base de Datos** |  | 2020-01-21 → 2020-01-15 (-6d) | 38.54d → 34.59d |  | 0d → 3d | baseline start none → 2019-11-11; baseline finish none → 2020-01-20 |
| 28 | Diseño de Tablas y Relaciones | 2019-12-17 → 2019-12-18 (+1d) | 2020-01-21 → 2020-01-13 (-8d) |  |  | 0d → 5d | baseline start none → 2019-12-16; baseline finish none → 2020-01-20 |
| 29 | **Validación del diseño de la BD** |  | 2020-01-07 → 2020-01-15 (+8d) | 28.67d → 34.59d |  | 9.87d → 3d | baseline start none → 2019-11-11; baseline finish none → 2020-01-10 |
| 30 | Validación del diseño de la BD (Diseñador) | 2019-12-18 → 2020-01-13 (+26d) | 2020-01-07 → 2020-01-15 (+8d) |  |  | 9.87d → 3d | baseline start none → 2019-12-17; baseline finish none → 2020-01-10 |
| 31 | Validación del diseño de la BD(JP) |  |  |  |  | 27d → 25d | baseline start none → 2019-11-11; baseline finish none → 2019-11-11 |
| 32 | **Construcción** |  | 2020-01-15 → 2020-01-20 (+5d) | 29.04d → 32.59d |  | 4.5d → 0d | baseline start none → 2019-11-18; baseline finish none → 2020-01-17 |
| 33 | Construcción del Prototipo | 2019-12-13 → 2019-12-20 (+7d) | 2019-12-16 → 2020-01-20 (+35d) | 1.5d → 2.06d |  | 14.87d → 0.21d | baseline start none → 2019-12-13; baseline finish none → 2020-01-17 |
| 34 | **Construcción de la BD** |  | 2020-01-15 → 2020-01-20 (+5d) | 29.04d → 32.59d |  | 4.5d → 0d | baseline start none → 2019-11-18; baseline finish none → 2020-01-15 |
| 35 | Construcción de la BD (Diseñador) | 2020-01-10 → 2020-01-15 (+5d) | 2020-01-15 → 2020-01-20 (+5d) |  |  | 4.5d → 0d | baseline start none → 2020-01-10; baseline finish none → 2020-01-15 |
| 36 | Construcción de la BD (Programador) |  |  |  |  | 29.54d → 29.09d | baseline start none → 2019-11-18; baseline finish none → 2019-11-21 |
| 37 | Codificación | 2019-12-03 → 2019-12-05 (+2d) | 2019-12-18 → 2019-12-20 (+2d) |  |  | 1.83d → 0.01d | baseline start none → 2019-12-02; baseline finish none → 2019-12-17 |
| 38 | **Pruebas** | 2019-12-18 → 2019-12-20 (+2d) |  | 5.33d → 4.62d |  | 1.83d → 0.01d | baseline start none → 2019-12-17; baseline finish none → 2020-01-08 |
| 39 | Pruebas Unitarias | 2019-12-18 → 2019-12-20 (+2d) | 2019-12-19 → 2020-01-07 (+19d) | 1d → 0.76d |  | 1.83d → 0.01d | baseline start none → 2019-12-17; baseline finish none → 2019-12-18 |
| 40 | Pruebas de Integración | 2019-12-19 → 2020-01-07 (+19d) | 2020-01-07 → 2020-01-08 (+1d) | 2d → 1.52d |  | 1.83d → 0.01d | baseline start none → 2019-12-18; baseline finish none → 2019-12-20 |
| 41 | Pruebas de Sistema | 2020-01-07 → 2020-01-08 (+1d) |  |  |  | 2.5d → 0.68d | baseline start none → 2019-12-20; baseline finish none → 2020-01-08 |
| 42 | **Demostración a los usuarios** |  |  |  |  | 2.5d → 0.68d | baseline start none → 2020-01-08; baseline finish none → 2020-01-15 |
| 43 | Entrenamiento de usuarios |  |  |  |  | 2.5d → 0.68d | baseline start none → 2020-01-08; baseline finish none → 2020-01-14 |
| 44 | Validación del producto por los usuarios |  |  |  |  | 2.5d → 0.68d | baseline start none → 2020-01-14; baseline finish none → 2020-01-15 |
| 45 | **Documentación** | 2019-12-02 → 2019-12-04 (+2d) | 2020-01-17 → 2020-01-20 (+3d) | 21d → 20.29d |  | 1.83d → 0.01d | baseline start none → 2019-11-29; baseline finish none → 2020-01-16 |
| 46 | Documentación técnica de proyecto | 2019-12-02 → 2019-12-04 (+2d) | 2019-12-18 → 2019-12-20 (+2d) |  |  | 12.83d → 10.3d | baseline start none → 2019-11-29; baseline finish none → 2019-12-17 |
| 47 | Documentación de usuarios | 2020-01-10 → 2020-01-13 (+3d) | 2020-01-17 → 2020-01-20 (+3d) |  |  | 1.83d → 0.01d | baseline start none → 2020-01-09; baseline finish none → 2020-01-16 |

## Version 3 (saved 2019-11-27, file Proyecto1.2_-_Linea_Base.mpp)

Note of the change: 3rd year

Last finish 2020-01-20 → 2020-01-21 (+1d).

Added:

| ID | Task | Duration | Start | Finish | Constraint | Resources |
| --- | --- | --- | --- | --- | --- | --- |
| 48 | BootCamp | 5d | 2019-11-27 | 2019-12-03 | start no earlier than 2019-11-27 | AnalistaD B |

Changed:

| ID | Task | Start | Finish | Duration | Complete | Total float | Other |
| --- | --- | --- | --- | --- | --- | --- | --- |
| 1 | **Proyecto GESPROAGRO** |  | 2020-01-20 → 2020-01-21 (+1d) | 37.59d → 38.57d | 24% → 23% |  | baseline finish 2020-01-20 → 2020-01-21 |
| 5 | **Análisis de requisitos de software** |  |  | 15.51d → 16d | 82% → 80% | 0.01d → 0d |  |
| 9 | Preparación de los puestos de trabajo |  |  | 1.51d → 2d |  | 0.01d → 0d |  |
| 17 | **Diseño Preliminar** | 2019-12-02 → 2019-12-03 (+1d) | 2020-01-08 → 2020-01-14 (+6d) | 14.28d → 17.82d |  | 0.01d → 0d | baseline finish 2020-01-10 → 2020-01-14 |
| 18 | Diseño de los datos y procesos | 2019-12-02 → 2019-12-03 (+1d) |  | 4.58d → 5d |  | 0.01d → 0d | resources AnalistaD; JefeA → AnalistaD; JefeA; AnalistaD B; baseline finish 2019-12-04 → 2019-12-05 |
| 19 | Diseño del plan de pruebas | 2020-01-07 → 2019-12-19 (-19d) | 2020-01-08 → 2020-01-14 (+6d) | 1.74d → 2d |  | 7.8d → 4.75d | baseline start 2019-12-18 → 2019-12-19; baseline finish 2020-01-10 → 2020-01-14 |
| 20 | **Diseño Detallado** |  | 2020-01-16 → 2020-01-20 (+4d) | 11.6d → 14.33d |  | 2.24d → 0.75d | baseline start 2019-12-12 → 2019-12-16; baseline finish 2020-01-16 → 2020-01-21 |
| 21 | Diseño gráfico de la aplicación |  |  |  |  | 7.74d → 9.21d | baseline start 2019-12-13 → 2019-12-16; baseline finish 2019-12-20 → 2020-01-07 |
| 22 | **Diseño Técnico de componentes** |  | 2020-01-16 → 2020-01-20 (+4d) | 11.6d → 14.33d |  | 2.24d → 0.75d | baseline start 2019-12-12 → 2019-12-16; baseline finish 2020-01-16 → 2020-01-21 |
| 23 | Presentación | 2020-01-08 → 2019-12-20 (-19d) | 2020-01-09 → 2020-01-07 (-2d) |  |  | 6.8d → 10.33d | baseline start 2019-12-19 → 2019-12-20; baseline finish 2019-12-20 → 2020-01-07 |
| 24 | Mantenimiento de Explotación Agrícola | 2019-12-18 → 2019-12-16 (-2d) | 2020-01-13 → 2020-01-15 (+2d) |  |  | 5.2d → 3.75d | baseline start 2019-12-12 → 2019-12-16; baseline finish 2020-01-13 → 2020-01-15 |
| 25 | Mantenimiento de Historial; Reservas, Tarifas y Eventos | 2019-12-16 → 2020-01-07 (+22d) | 2020-01-13 → 2020-01-17 (+4d) |  |  | 4.74d → 1.75d | baseline start 2019-12-19 → 2020-01-07; baseline finish 2020-01-15 → 2020-01-20 |
| 26 | Localización |  | 2020-01-16 → 2020-01-20 (+4d) |  |  | 2.24d → 0.75d | resources ProgramadorJ; AnalistaP → ProgramadorJ; baseline start 2019-12-12 → 2019-12-16; baseline finish 2020-01-16 → 2020-01-21 |
| 27 | **Diseño de la Base de Datos** |  | 2020-01-15 → 2020-01-21 (+6d) | 34.59d → 38.04d |  | 3d → 0.53d | baseline finish 2020-01-20 → 2020-01-21 |
| 28 | Diseño de Tablas y Relaciones | 2019-12-18 → 2019-12-17 (-1d) | 2020-01-13 → 2020-01-21 (+8d) |  |  | 5d → 0.53d | resources AnalistaD; JefeA → AnalistaD; JefeA; AnalistaD B; baseline start 2019-12-16 → 2019-12-17; baseline finish 2020-01-20 → 2020-01-21 |
| 29 | **Validación del diseño de la BD** |  | 2020-01-15 → 2019-12-20 (-26d) | 34.59d → 27.24d |  | 3d → 11.33d | baseline finish 2020-01-10 → 2020-01-07 |
| 30 | Validación del diseño de la BD (Diseñador) | 2020-01-13 → 2019-12-18 (-26d) | 2020-01-15 → 2019-12-20 (-26d) |  |  | 3d → 11.33d | baseline start 2019-12-17 → 2019-12-18; baseline finish 2020-01-10 → 2020-01-07 |
| 32 | **Construcción** |  | 2020-01-20 → 2020-01-21 (+1d) | 32.59d → 33.57d |  |  | baseline finish 2020-01-17 → 2020-01-15 |
| 33 | Construcción del Prototipo | 2019-12-20 → 2019-12-17 (-3d) | 2020-01-20 → 2020-01-21 (+1d) | 2.06d → 3d |  | 0.21d → 0d | resources ProgramadorJ; AnalistaP → ProgramadorJ; AnalistaP; AnalistaD B; baseline finish 2020-01-17 → 2019-12-16 |
| 34 | **Construcción de la BD** |  | 2020-01-20 → 2020-01-15 (-5d) | 32.59d → 29.32d |  | 0d → 4.25d |  |
| 35 | Construcción de la BD (Diseñador) | 2020-01-15 → 2020-01-13 (-2d) | 2020-01-20 → 2020-01-15 (-5d) | 3d → 1.5d |  | 0d → 4.25d | resources AnalistaD → AnalistaD; AnalistaD B |
| 37 | Codificación | 2019-12-05 → 2019-12-10 (+5d) |  | 9.21d → 8.49d |  | 0.01d → 0.08d | resources ProgramadorJ; AnalistaP; AnalistaD; AnalistaW; JefeA → ProgramadorJ; AnalistaP; AnalistaD; AnalistaW; JefeA; AnalistaD B; baseline start 2019-12-02 → 2019-12-03; baseline finish 2019-12-17 → 2019-12-18 |
| 38 | **Pruebas** |  | 2020-01-10 → 2020-01-13 (+3d) | 4.62d → 5.33d |  | 0.01d → 0.08d | baseline start 2019-12-17 → 2019-12-18; baseline finish 2020-01-08 → 2020-01-10 |
| 39 | Pruebas Unitarias |  |  | 0.76d → 1d |  | 0.01d → 0.08d | baseline start 2019-12-17 → 2019-12-18; baseline finish 2019-12-18 → 2019-12-19 |
| 40 | Pruebas de Integración |  | 2020-01-08 → 2020-01-09 (+1d) | 1.52d → 2d |  | 0.01d → 0.08d | baseline start 2019-12-18 → 2019-12-19; baseline finish 2019-12-20 → 2020-01-07 |
| 41 | Pruebas de Sistema | 2020-01-08 → 2020-01-09 (+1d) | 2020-01-10 → 2020-01-13 (+3d) |  |  | 0.68d → 0.75d | baseline start 2019-12-20 → 2020-01-07; baseline finish 2020-01-08 → 2020-01-10 |
| 42 | **Demostración a los usuarios** | 2020-01-10 → 2020-01-13 (+3d) | 2020-01-17 → 2020-01-20 (+3d) |  |  | 0.68d → 0.75d | baseline start 2020-01-08 → 2020-01-10; baseline finish 2020-01-15 → 2020-01-17 |
| 43 | Entrenamiento de usuarios | 2020-01-10 → 2020-01-13 (+3d) | 2020-01-16 → 2020-01-17 (+1d) |  |  | 0.68d → 0.75d | baseline start 2020-01-08 → 2020-01-10; baseline finish 2020-01-14 → 2020-01-16 |
| 44 | Validación del producto por los usuarios | 2020-01-16 → 2020-01-17 (+1d) | 2020-01-17 → 2020-01-20 (+3d) |  |  | 0.68d → 0.75d | baseline start 2020-01-14 → 2020-01-16; baseline finish 2020-01-15 → 2020-01-17 |
| 45 | **Documentación** |  | 2020-01-20 → 2020-01-21 (+1d) | 20.29d → 21d |  | 0.01d → 0.08d | baseline start 2019-11-29 → 2019-12-02; baseline finish 2020-01-16 → 2020-01-17 |
| 46 | Documentación técnica de proyecto |  |  |  |  | 10.3d → 11.08d | baseline start 2019-11-29 → 2019-12-02; baseline finish 2019-12-17 → 2019-12-18 |
| 47 | Documentación de usuarios | 2020-01-13 → 2020-01-14 (+1d) | 2020-01-20 → 2020-01-21 (+1d) |  |  | 0.01d → 0.08d | baseline start 2020-01-09 → 2020-01-10; baseline finish 2020-01-16 → 2020-01-17 |

## Version 4 (saved 2019-11-27, file Proyecto1.3 - Linea Base.mpp)

Note of the change: 3rd year

Last finish 2020-01-21 → 2020-01-17 (-4d).

Changed:

| ID | Task | Start | Finish | Duration | Complete | Total float | Other |
| --- | --- | --- | --- | --- | --- | --- | --- |
| 1 | **Proyecto GESPROAGRO** |  | 2020-01-21 → 2020-01-17 (-4d) | 38.57d → 36.9d |  |  |  |
| 5 | **Análisis de requisitos de software** |  |  | 16d → 15.51d | 80% → 82% |  |  |
| 9 | Preparación de los puestos de trabajo |  |  | 2d → 1.51d |  |  |  |
| 17 | **Diseño Preliminar** | 2019-12-03 → 2019-12-02 (-1d) | 2020-01-14 → 2020-01-13 (-1d) | 17.82d → 17.39d |  |  |  |
| 18 | Diseño de los datos y procesos | 2019-12-03 → 2019-12-02 (-1d) |  | 5d → 4.54d |  |  |  |
| 19 | Diseño del plan de pruebas | 2019-12-19 → 2019-12-17 (-2d) | 2020-01-14 → 2020-01-13 (-1d) |  |  | 4.75d → 4d |  |
| 20 | **Diseño Detallado** | 2019-12-16 → 2019-12-13 (-3d) | 2020-01-20 → 2020-01-17 (-3d) | 14.33d → 14.08d |  | 0.75d → 0.39d |  |
| 21 | Diseño gráfico de la aplicación | 2019-12-17 → 2019-12-16 (-1d) | 2020-01-08 → 2020-01-07 (-1d) |  |  | 9.21d → 8.63d |  |
| 22 | **Diseño Técnico de componentes** | 2019-12-16 → 2019-12-13 (-3d) | 2020-01-20 → 2020-01-17 (-3d) | 14.33d → 14.08d |  | 0.75d → 0.39d |  |
| 23 | Presentación | 2019-12-20 → 2019-12-18 (-2d) | 2020-01-07 → 2019-12-19 (-19d) |  |  | 10.33d → 10.24d |  |
| 24 | Mantenimiento de Explotación Agrícola | 2019-12-16 → 2019-12-13 (-3d) | 2020-01-15 → 2020-01-14 (-1d) |  |  | 3.75d → 3d |  |
| 25 | Mantenimiento de Historial; Reservas, Tarifas y Eventos | 2020-01-07 → 2019-12-20 (-18d) |  |  |  | 1.75d → 0.67d |  |
| 26 | Localización | 2019-12-16 → 2019-12-13 (-3d) | 2020-01-20 → 2020-01-17 (-3d) |  |  | 0.75d → 0.39d |  |
| 27 | **Diseño de la Base de Datos** |  | 2020-01-21 → 2020-01-17 (-4d) | 38.04d → 36.25d |  | 0.53d → 0.65d |  |
| 28 | Diseño de Tablas y Relaciones | 2019-12-17 → 2019-12-13 (-4d) | 2020-01-21 → 2020-01-17 (-4d) |  |  | 0.53d → 0.65d |  |
| 29 | **Validación del diseño de la BD** |  | 2019-12-20 → 2020-01-14 (+25d) | 27.24d → 33.07d |  | 11.33d → 3.83d |  |
| 30 | Validación del diseño de la BD (Diseñador) | 2019-12-18 → 2020-01-10 (+23d) | 2019-12-20 → 2020-01-14 (+25d) |  |  | 11.33d → 3.83d | resources AnalistaD → AnalistaD B |
| 32 | **Construcción** |  | 2020-01-21 → 2020-01-17 (-4d) | 33.57d → 31.61d |  | 0d → 0.29d |  |
| 33 | Construcción del Prototipo | 2019-12-17 → 2019-12-16 (-1d) | 2020-01-21 → 2020-01-17 (-4d) | 3d → 2.93d |  | 0d → 0.29d | resources ProgramadorJ; AnalistaP; AnalistaD B → ProgramadorJ; AnalistaP; AnalistaD B; AnalistaD |
| 34 | **Construcción de la BD** |  |  | 29.32d → 29.57d |  | 4.25d → 2.33d |  |
| 35 | Construcción de la BD (Diseñador) | 2020-01-13 → 2020-01-14 (+1d) |  |  |  | 4.25d → 2.33d |  |
| 37 | Codificación | 2019-12-10 → 2019-12-05 (-5d) |  | 8.49d → 9.1d |  | 0.08d → 0d |  |
| 38 | **Pruebas** |  | 2020-01-13 → 2020-01-10 (-3d) | 5.33d → 4.08d |  | 0.08d → 0d |  |
| 39 | Pruebas Unitarias |  | 2020-01-07 → 2019-12-20 (-18d) | 1d → 0.75d |  | 0.08d → 0d | resources AnalistaP; ProgramadorJ; AnalistaD → AnalistaP; ProgramadorJ; AnalistaD; AnalistaD B |
| 40 | Pruebas de Integración | 2020-01-07 → 2019-12-20 (-18d) | 2020-01-09 → 2020-01-07 (-2d) | 2d → 1d |  | 0.08d → 0d | resources AnalistaP → AnalistaP; AnalistaD B |
| 41 | Pruebas de Sistema | 2020-01-09 → 2020-01-07 (-2d) | 2020-01-13 → 2020-01-10 (-3d) |  |  | 0.75d → 0.67d |  |
| 42 | **Demostración a los usuarios** | 2020-01-13 → 2020-01-10 (-3d) | 2020-01-20 → 2020-01-17 (-3d) |  |  | 0.75d → 0.67d |  |
| 43 | Entrenamiento de usuarios | 2020-01-13 → 2020-01-10 (-3d) | 2020-01-17 → 2020-01-16 (-1d) |  |  | 0.75d → 0.67d |  |
| 44 | Validación del producto por los usuarios | 2020-01-17 → 2020-01-16 (-1d) | 2020-01-20 → 2020-01-17 (-3d) |  |  | 0.75d → 0.67d |  |
| 45 | **Documentación** |  | 2020-01-21 → 2020-01-17 (-4d) | 21d → 19.75d |  | 0.08d → 0d |  |
| 47 | Documentación de usuarios | 2020-01-14 → 2020-01-10 (-4d) | 2020-01-21 → 2020-01-17 (-4d) |  |  | 0.08d → 0d |  |

## Version 5 (saved 2019-11-28, file Proyecto1.0 - Linea Base.mpp)

Note of the change: 3rd year

Last finish 2020-01-17 → 2020-01-24 (+7d).

Removed: 48 BootCamp

Changed:

| ID | Task | Start | Finish | Duration | Complete | Total float | Other |
| --- | --- | --- | --- | --- | --- | --- | --- |
| 1 | **Proyecto GESPROAGRO** |  | 2020-01-17 → 2020-01-24 (+7d) | 36.9d → 41.71d | 23% → 24% |  |  |
| 5 | **Análisis de requisitos de software** |  | 2019-12-02 → 2019-11-29 (-3d) | 15.51d → 15d | 82% → 84% | 0d → 0.67d |  |
| 9 | Preparación de los puestos de trabajo |  | 2019-12-02 → 2019-11-29 (-3d) | 1.51d → 1d |  | 0d → 0.67d | resources AnalistaP → AnalistaP; AnalistaW |
| 12 | **Análisis de requisitos del Sistema** |  | 2019-11-29 → 2019-12-02 (+3d) | 8.67d → 9.67d |  | 0.85d → 0d |  |
| 14 | **Validación de HW necesario** |  | 2019-11-29 → 2019-12-02 (+3d) | 6.17d → 7.17d |  | 0.85d → 0d |  |
| 15 | Validación de hardware necesario (Técnico) | 2019-11-29 → 2019-12-02 (+3d) | 2019-11-29 → 2019-12-02 (+3d) |  |  | 0.85d → 0d |  |
| 17 | **Diseño Preliminar** |  | 2020-01-13 → 2020-01-17 (+4d) | 17.39d → 21.17d |  |  |  |
| 18 | Diseño de los datos y procesos |  | 2019-12-11 → 2019-12-12 (+1d) | 4.54d → 6d |  |  | resources AnalistaD; JefeA; AnalistaD B → AnalistaD; JefeA |
| 19 | Diseño del plan de pruebas | 2019-12-17 → 2020-01-08 (+22d) | 2020-01-13 → 2020-01-17 (+4d) |  |  | 4d → 4.87d |  |
| 20 | **Diseño Detallado** | 2019-12-13 → 2019-12-19 (+6d) | 2020-01-17 → 2020-01-24 (+7d) | 14.08d → 14.74d |  | 0.39d → 0.54d |  |
| 21 | Diseño gráfico de la aplicación | 2019-12-16 → 2019-12-19 (+3d) | 2020-01-07 → 2020-01-10 (+3d) |  |  | 8.63d → 10.27d |  |
| 22 | **Diseño Técnico de componentes** | 2019-12-13 → 2019-12-19 (+6d) | 2020-01-17 → 2020-01-24 (+7d) | 14.08d → 14.33d |  | 0.39d → 0.54d |  |
| 23 | Presentación | 2019-12-18 → 2020-01-09 (+22d) | 2019-12-19 → 2020-01-10 (+22d) |  |  | 10.24d → 10.3d |  |
| 24 | Mantenimiento de Explotación Agrícola | 2019-12-13 → 2019-12-19 (+6d) | 2020-01-14 → 2020-01-20 (+6d) |  |  | 3d → 3.87d |  |
| 25 | Mantenimiento de Historial; Reservas, Tarifas y Eventos | 2019-12-20 → 2020-01-10 (+21d) | 2020-01-17 → 2020-01-23 (+6d) |  |  | 0.67d → 1.53d |  |
| 26 | Localización | 2019-12-13 → 2019-12-19 (+6d) | 2020-01-17 → 2020-01-24 (+7d) |  |  | 0.39d → 0.54d |  |
| 27 | **Diseño de la Base de Datos** |  | 2020-01-17 → 2020-01-24 (+7d) | 36.25d → 41.71d |  | 0.65d → 0d |  |
| 28 | Diseño de Tablas y Relaciones | 2019-12-13 → 2019-12-20 (+7d) | 2020-01-17 → 2020-01-24 (+7d) |  |  | 0.65d → 0d | resources AnalistaD; JefeA; AnalistaD B → AnalistaD; JefeA |
| 29 | **Validación del diseño de la BD** |  | 2020-01-14 → 2020-01-10 (-4d) | 33.07d → 31.84d |  | 3.83d → 9.87d |  |
| 30 | Validación del diseño de la BD (Diseñador) | 2020-01-10 → 2020-01-07 (-3d) | 2020-01-14 → 2020-01-10 (-4d) |  |  | 3.83d → 9.87d | resources AnalistaD B → AnalistaD |
| 32 | **Construcción** |  | 2020-01-17 → 2020-01-20 (+3d) | 31.61d → 32.21d |  | 0.29d → 4.5d |  |
| 33 | Construcción del Prototipo | 2019-12-16 → 2019-12-18 (+2d) | 2020-01-17 → 2019-12-19 (-29d) | 2.93d → 1.5d |  | 0.29d → 14.87d | resources ProgramadorJ; AnalistaP; AnalistaD B; AnalistaD → ProgramadorJ; AnalistaP |
| 34 | **Construcción de la BD** |  | 2020-01-15 → 2020-01-20 (+5d) | 29.57d → 32.21d |  | 2.33d → 4.5d |  |
| 35 | Construcción de la BD (Diseñador) | 2020-01-14 → 2020-01-15 (+1d) | 2020-01-15 → 2020-01-20 (+5d) | 1.5d → 3d |  | 2.33d → 4.5d | resources AnalistaD; AnalistaD B → AnalistaD |
| 37 | Codificación | 2019-12-05 → 2019-12-10 (+5d) | 2019-12-20 → 2020-01-07 (+18d) | 9.1d → 9.21d |  | 0d → 1.83d | resources ProgramadorJ; AnalistaP; AnalistaD; AnalistaW; JefeA; AnalistaD B → ProgramadorJ; AnalistaP; AnalistaD; AnalistaW; JefeA |
| 38 | **Pruebas** | 2019-12-20 → 2020-01-07 (+18d) | 2020-01-10 → 2020-01-15 (+5d) | 4.08d → 5.33d |  | 0d → 1.83d |  |
| 39 | Pruebas Unitarias | 2019-12-20 → 2020-01-07 (+18d) | 2019-12-20 → 2020-01-08 (+19d) | 0.75d → 1d |  | 0d → 1.83d | resources AnalistaP; ProgramadorJ; AnalistaD; AnalistaD B → AnalistaP; ProgramadorJ; AnalistaD |
| 40 | Pruebas de Integración | 2019-12-20 → 2020-01-08 (+19d) | 2020-01-07 → 2020-01-10 (+3d) | 1d → 2d |  | 0d → 1.83d | resources AnalistaP; AnalistaD B → AnalistaP |
| 41 | Pruebas de Sistema | 2020-01-07 → 2020-01-10 (+3d) | 2020-01-10 → 2020-01-15 (+5d) |  |  | 0.67d → 2.5d |  |
| 42 | **Demostración a los usuarios** | 2020-01-10 → 2020-01-15 (+5d) | 2020-01-17 → 2020-01-22 (+5d) |  |  | 0.67d → 2.5d |  |
| 43 | Entrenamiento de usuarios | 2020-01-10 → 2020-01-15 (+5d) | 2020-01-16 → 2020-01-21 (+5d) |  |  | 0.67d → 2.5d |  |
| 44 | Validación del producto por los usuarios | 2020-01-16 → 2020-01-21 (+5d) | 2020-01-17 → 2020-01-22 (+5d) |  |  | 0.67d → 2.5d |  |
| 45 | **Documentación** | 2019-12-04 → 2019-12-05 (+1d) | 2020-01-17 → 2020-01-22 (+5d) | 19.75d → 21d |  | 0d → 1.83d |  |
| 46 | Documentación técnica de proyecto | 2019-12-04 → 2019-12-05 (+1d) | 2019-12-20 → 2020-01-07 (+18d) |  |  | 9.75d → 12.83d |  |
| 47 | Documentación de usuarios | 2020-01-10 → 2020-01-15 (+5d) | 2020-01-17 → 2020-01-22 (+5d) |  |  | 0d → 1.83d |  |
